# ProvoDashboard

Schedule from MS Project, 2014-09-09 to 2015-04-29, A marks actual dates.
Toshiba

## Calendars

- Standard: Mon-Fri 08:00-12:00, 13:00-17:00; Sat-Sun off.

## Resources

| Resource | Group |
| --- | --- |
| Todd | Provo Dashboard |
| Ikani | Provo Dashboard |
| Sam | Provo Dashboard |
| Colton | Provo Dashboard |
| Blake |  |

## Schedule

| ID | WBS | Task | Type | Duration | Start | Finish | Predecessors | Complete | Constraint | Resources | Work | Actual work |
| --- | --- | --- | --- | --- | --- | --- | --- | --- | --- | --- | --- | --- |
| 1 | 1 | Access to Server | manual | 1d | 2015-01-08 A | 2015-01-08 A |  | 100% |  | Todd | 8h | 8h |
| 2 | 2 | Database Design | manual | 4d | 2014-10-09 A | 2014-10-14 A | 1 | 100% |  | Colton | 32h | 32h |
| 3 | 3 | Input Form questions | manual | 3d | 2014-09-09 A | 2014-09-11 A |  | 100% |  | Blake | 24h | 24h |
| 4 | 4 | Development Envrioments created | manual | 7d | 2014-09-30 A | 2014-10-08 A |  | 100% |  | Todd | 56h | 56h |
| 5 | 5 | Version Control created and accessile | manual | 2d | 2014-09-30 A | 2014-10-01 A |  | 100% |  | Todd | 16h | 16h |
| 6 | 6 | U.I design of layouts created | manual | 14d | 2014-10-09 A | 2014-10-28 A | 4 | 100% |  | Ikani | 112h | 112h |
| 7 | 7 | U.I design intergration | manual | 14d | 2014-10-09 A | 2014-10-28 A | 4 | 100% |  | Ikani | 112h | 112h |
| 8 | 8 | Homepage | manual | 7d | 2014-10-24 A | 2014-11-03 A |  | 100% |  | Todd | 56h | 56h |
| 9 | 9 | Category page template | manual | 7d | 2014-10-29 A | 2014-11-06 A | 6 | 100% |  | Ikani | 56h | 56h |
| 10 | 10 | Graph Integration | manual | 7d | 2014-10-29 A | 2014-11-06 A | 6 | 100% |  | Todd | 56h | 56h |
| 11 | 11 | Graphs display data from database correctly | manual | 7d | 2014-10-15 A | 2014-10-23 A | 2 | 100% |  | Colton; Todd | 112h | 112h |
| 12 | 12 | Input forms for continual data gathering | manual | 14d | 2014-10-15 A | 2014-11-03 A | 2 | 100% |  | Colton | 112h | 112h |
| 13 | 13 | Input forms correctly save data to database | manual | 7d | 2014-11-04 A | 2014-11-12 A | 12 | 100% |  | Colton | 56h | 56h |
| 14 | 14 | New database data is viewable to website | manual | 14d | 2014-11-13 A | 2014-12-02 A | 13 | 100% |  | Todd | 112h | 112h |
| 15 | 15 | Modals for individual category graph displays | manual | 14d | 2014-12-02 A | 2014-12-19 A |  | 100% |  | Todd | 112h | 112h |
| 16 | 16 | Update Project Plan | manual | 5d | 2015-01-06 A | 2015-01-12 A |  | 100% |  | Colton | 40h | 40h |
| 17 | 17 | **update dashboard page layout** |  | 11d | 2015-01-06 A | 2015-01-20 A |  | 100% |  | Todd | 408h | 408h |
| 18 | 17.1 | add header | manual | 10d | 2015-01-06 A | 2015-01-19 A |  | 100% | start no earlier than 2015-01-06 | Todd | 80h | 80h |
| 19 | 17.2 | center divs | manual | 10d | 2015-01-06 A | 2015-01-19 A |  | 100% | start no earlier than 2015-01-06 | Todd | 80h | 80h |
| 20 | 17.3 | add text blocks | manual | 10d | 2015-01-06 A | 2015-01-19 A |  | 100% | start no earlier than 2015-01-06 | Todd | 80h | 80h |
| 21 | 17.4 | change column sizes | manual | 10d | 2015-01-06 A | 2015-01-19 A |  | 100% | start no earlier than 2015-01-06 | Todd | 80h | 80h |
| 22 | 18 | **change categories** |  | 11d | 2015-01-06 A | 2015-01-20 A |  | 100% |  | Ikani | 168h | 168h |
| 23 | 18.1 | add icons | manual | 10d | 2015-01-06 A | 2015-01-19 A |  | 100% |  | Ikani | 80h | 80h |
| 24 | 19 | **Data base categories** |  | 11d | 2015-01-20 | 2015-02-03 |  |  |  | Colton | 128h |  |
| 25 | 19.1 | Dynamic Scripting of categories | manual | 5d | 2015-01-27 | 2015-02-02 |  |  |  | Colton | 40h |  |

| ID | WBS | Task | Type | Duration | Start | Finish | Predecessors | Remaining | Resources | Work |
| --- | --- | --- | --- | --- | --- | --- | --- | --- | --- | --- |
| 26 | 20 | **sub category pages** |  | 14d | 2015-01-21 | 2015-02-09 | 17 |  | Sam | 232h |
| 27 | 20.1 | Create new pages from categories | manual | 5d | 2015-01-21 | 2015-01-27 |  |  | Sam | 40h |
| 28 | 20.2 | Attach graphs based on feedback | manual | 5d | 2015-01-28 | 2015-02-03 |  |  | Sam | 40h |
| 29 | 20.3 | Test custom date ranges | manual | 5d | 2015-02-03 | 2015-02-09 |  |  | Sam | 40h |
| 30 | 21 | drill down page layouts and template | manual | 14d | 2015-01-21 | 2015-02-09 | 17 |  | Todd | 112h |
| 31 | 22 | WATER LINE | manual | 1d | 2015-01-08 A | 2015-01-08 |  | 1d |  |  |
| 32 | 23 | Create Administraiton Page | manual | 5d | 2015-01-20 | 2015-01-26 |  |  | Todd | 40h |
| 33 | 24 | **Add Permissions** |  | 11d | 2015-02-10 | 2015-02-24 | 23 |  | Colton | 184h |
| 34 | 24.1 | Define and set Admin permissions | manual | 7d | 2015-02-10 | 2015-02-18 |  |  | Colton | 56h |
| 35 | 24.2 | Define and Set User Permission | manual | 5d | 2015-02-17 | 2015-02-23 |  |  | Colton | 40h |
| 36 | 25 | **data input page** |  | 16d | 2015-02-09 | 2015-03-02 |  |  | Sam | 384h |
| 37 | 25.1 | Create Data input page | manual | 4d | 2015-02-09 | 2015-02-12 |  |  | Sam | 32h |
| 38 | 25.2 | Create User Friendly Input fields | manual | 4d | 2015-02-13 | 2015-02-18 |  |  | Sam | 32h |
| 39 | 25.3 | Test Category Data input | manual | 4d | 2015-02-19 | 2015-02-24 |  |  | Sam | 32h |
| 40 | 25.4 | add batch import | manual | 4d | 2015-02-25 | 2015-03-02 |  |  | Sam | 32h |
| 41 | 25.5 | Test batch import | manual | 4d | 2015-02-25 | 2015-03-02 |  |  | Sam | 32h |
| 42 | 25.6 | SQL Injection checks | manual | 4d | 2015-02-19 | 2015-02-24 |  |  | Colton | 32h |
| 43 | 25.7 | Data Validation | manual | 4d | 2015-02-25 | 2015-03-02 |  |  | Todd | 32h |
| 44 | 25.8 | Exception Handleing | manual | 4d | 2015-02-13 | 2015-02-18 |  |  | Colton | 32h |
| 45 | 26 | **Create New Category and Graphs** |  | 28d | 2015-02-26 | 2015-04-06 |  |  | Ikani; Colton; Sam; Todd | 1104h |
| 46 | 26.1 | Create Category Page | manual | 5d | 2015-02-25 | 2015-03-03 |  |  | Ikani | 40h |
| 47 | 26.2 | data input for new category | manual | 7d | 2015-03-04 | 2015-03-12 | 46 |  | Sam | 56h |
| 48 | 26.3 | create category in database | manual | 7d | 2015-03-13 | 2015-03-23 | 47 |  | Colton | 56h |
| 49 | 26.4 | render new category graphs and pages | manual | 7d | 2015-03-24 | 2015-04-01 | 48 |  | Todd | 56h |
| 50 | 27 | improve admin page | manual | 21d | 2015-02-26 | 2015-03-26 |  |  | Ikani | 168h |
| 51 | 28 | admin styling | manual | 14d | 2015-03-30 | 2015-04-16 |  |  | Sam | 112h |
| 52 | 29 | improve input interface | manual | 14d | 2015-03-30 | 2015-04-16 |  |  | Colton | 112h |
| 53 | 30 | User Testing | manual | 10d | 2015-04-16 | 2015-04-29 |  |  | Colton; Todd; Sam; Ikani | 320h |
